# ai-trailblazers-hackathon

Schedule from MS Project XML, 2025-12-01 to 2025-12-24.

## Calendars

- Standard[Imported]: Mon-Fri 08:00-12:00, 13:00-17:00; Sat-Sun off.

## Resources

| Resource | Rate |
| --- | --- |
| Unassigned |  |
| Project Lead |  |
| Maria (AI Trailblazers) |  |
| Aaron (AI Trailblazers) |  |
| UA Risk Runners Faculty |  |
| Math Dept Admin |  |
| Catering (Pizza/Drinks) | 300 |
| Swag & Prizes | 200 |
| Printing (Flyers) | 50 |
| Room Rental Fee |  |

## Schedule

| ID | WBS | Task | Duration | Start | Finish | Predecessors | Constraint | Resources |
| --- | --- | --- | --- | --- | --- | --- | --- | --- |
| 1 | 1 | **PHASE 1: PARTNERSHIP & VENUE** | 8.5d | 2025-12-01 | 2025-12-11 |  | start no earlier than 2025-12-01 |  |
| 2 | 1.1 | Draft "Founder Returns" Partnership Proposal | 2d | 2025-12-01 | 2025-12-02 |  |  | Project Lead |
| 3 | 1.2 | Email UA Risk Runners Faculty Advisors | 0d | 2025-12-02 | 2025-12-02 | 2 |  | Project Lead |
| 4 | 1.3 | Meeting with Faculty/Math Dept | 0.5d | 2025-12-03 | 2025-12-03 | 3 |  | Project Lead; UA Risk Runners Faculty |
| 5 | 1.4 | Wait for Dept Approval | 5d | 2025-12-03 | 2025-12-10 | 4 |  |  |
| 6 | 1.5 | Confirm Room Availability (Capacity 40-60) | 1d | 2025-12-10 | 2025-12-11 | 5 |  | Math Dept Admin |
| 7 | 1.6 | **MILESTONE: Room Secured** | 0d | 2025-12-11 | 2025-12-11 | 6 |  |  |
| 8 | 2 | **PHASE 2: MARKETING (AI TRAILBLAZERS)** | 6.92d | 2025-12-11 | 2025-12-22 |  |  |  |
| 9 | 2.1 | Sync with Maria & Aaron on Strategy | 0.25d | 2025-12-11 | 2025-12-11 | 7 |  | Project Lead; Maria (AI Trailblazers); Aaron (AI Trailblazers) |
| 10 | 2.2 | Draft Flyer Copy (Highlighting Job Ops) | 1.92d | 2025-12-11 | 2025-12-15 | 9 |  | Maria (AI Trailblazers) |
| 11 | 2.3 | Design Flyer Graphics | 2.92d | 2025-12-15 | 2025-12-18 | 10 |  | Maria (AI Trailblazers) |
| 12 | 2.4 | Final Review & Approval | 0.92d | 2025-12-18 | 2025-12-19 | 11 |  | Project Lead |
| 13 | 2.5 | Distribute to UA Dept Lists | 0.92d | 2025-12-19 | 2025-12-22 | 12 |  | UA Risk Runners Faculty |
| 14 | 2.6 | Social Media Blast | 0.92d | 2025-12-19 | 2025-12-22 | 12 |  |  |
| 15 | 3 | **PHASE 3: CURRICULUM & JOBS** | 6d | 2025-12-03 | 2025-12-10 |  |  |  |
| 16 | 3.1 | Define AI Challenge Scope | 3d | 2025-12-03 | 2025-12-05 | 2 |  | Project Lead |
| 17 | 3.2 | Reach out to Corporate Partners for Jobs | 5d | 2025-12-03 | 2025-12-09 | 2 |  | Project Lead |
| 18 | 3.3 | Prepare Datasets for Hackathon | 3d | 2025-12-08 | 2025-12-10 | 16 |  | Project Lead |
| 19 | 4 | **PHASE 4: LOGISTICS** | 6d | 2025-12-11 | 2025-12-19 |  |  |  |
| 20 | 4.1 | Estimate Food Budget (40-60 ppl) | 1d | 2025-12-11 | 2025-12-12 | 7 |  | Project Lead |
| 21 | 4.2 | Order Catering (Pizza/Drinks) | 1d | 2025-12-12 | 2025-12-15 | 20 |  | Project Lead |
| 22 | 4.3 | Purchase Swag/Prizes | 5d | 2025-12-12 | 2025-12-19 | 20 |  | Project Lead |
| 23 | 4.4 | Confirm WiFi/Power with Facilities | 1d | 2025-12-11 | 2025-12-12 | 7 |  | Project Lead |
| 24 | 5 | **PHASE 5: THE EVENT** | 2.33d | 2025-12-22 | 2025-12-24 |  |  |  |
| 25 | 5.1 | Room Setup & Registration | 0d | 2025-12-22 | 2025-12-22 | 13, 21, 23 |  | Project Lead; Maria (AI Trailblazers); Aaron (AI Trailblazers) |
| 26 | 5.2 | **HACKATHON EVENT** | 0d | 2025-12-22 | 2025-12-22 | 25 |  | Project Lead; Maria (AI Trailblazers); Aaron (AI Trailblazers); UA Risk Runners Faculty |
| 27 | 5.3 | Teardown & Cleanup | 0d | 2025-12-22 | 2025-12-22 | 26 |  | Project Lead |
| 28 | 5.4 | Post-Event Follow up (Job Placements) | 2.33d | 2025-12-22 | 2025-12-24 | 27 |  | Project Lead |
